# 集控III区高级应用

How a schedule from a web Gantt chart changed from version to version. A marks actual dates.

## Version 1 (saved 2024-05-10)

| ID | WBS | Task | Duration | Start | Finish |
| --- | --- | --- | --- | --- | --- |
| 2 | 1 | **一期** | 25d | 2024-05-06 | 2024-06-07 |
| 3 |  | V1.0 架构搭建与需求梳理 | 5d | 2024-05-06 | 2024-05-10 |
| 4 |  | V1.1 实时监视模块(区域监视+场站监视)与指标计算组件迁移 | 10d | 2024-05-13 | 2024-05-24 |
| 5 |  | V1.2 实时监视(设备监视) | 10d | 2024-05-27 | 2024-06-07 |
| 6 |  | V1.3 XXXX | 1d | 2024-05-27 | 2024-05-27 |
| 7 |  | 二期 | 107d | 2024-11-01 | 2025-03-31 |
| 8 |  | 三期 | 65d | 2025-04-01 | 2025-06-30 |

## Version 2 (saved 2024-05-10)

Last finish stays 2025-06-30. Complete tasks 0 → 1.

Added:

| ID | Task | Duration | Start | Finish |
| --- | --- | --- | --- | --- |
| 3 | **V0.1 架构搭建与需求梳理** | 5d | 2024-05-06 | 2024-05-10 |
| 4 | **架构搭建** | 5d | 2024-05-06 | 2024-05-10 |
| 5 | 后端架构搭建 | 1d | 2024-05-06 | 2024-05-06 |
| 6 | 前端架构搭建 | 1d | 2024-05-10 | 2024-05-10 |
| 7 | 需求梳理 | 2d | 2024-05-09 | 2024-05-10 |
| 8 | **V1.1.0 实时监视模块(区域监视+场站监视)与指标计算组件迁移** | 10d | 2024-05-13 | 2024-05-24 |
| 9 | 需求评审 | 1d | 2024-05-13 | 2024-05-13 |
| 10 | UI设计 | 8d | 2024-05-13 | 2024-05-22 |
| 11 | 前端开发 | 8d | 2024-05-13 | 2024-05-22 |
| 12 | 后端开发 | 8d | 2024-05-13 | 2024-05-22 |
| 13 | 测试 | 2d | 2024-05-23 | 2024-05-24 |
| 14 | V1.1.1 需求设计 | 8d | 2024-05-13 | 2024-05-22 |
| 15 | V1.1.1 需求评审 | 1d | 2024-05-23 | 2024-05-23 |
| 16 | V1.1.1 UI设计 | 2d | 2024-05-23 | 2024-05-24 |
| 17 | **V1.1.1 实时监视(设备监视)** | 10d | 2024-05-27 | 2024-06-07 |
| 18 | UI设计 | 1d | 2024-05-27 | 2024-05-27 |
| 19 | 前端开发 | 1d | 2024-05-27 | 2024-05-27 |
| 20 | 后端开发 | 1d | 2024-05-27 | 2024-05-27 |
| 21 | 测试 | 2d | 2024-06-06 | 2024-06-07 |
| 22 | V1.1.2 需求设计 | 8d | 2024-05-27 | 2024-06-05 |
| 23 | V1.1.2 需求评审 | 1d | 2024-06-06 | 2024-06-06 |
| 24 | V1.1.2 UI设计 | 2d | 2024-06-06 | 2024-06-07 |
| 25 | V1.1.2 XXXX | 10d | 2024-06-10 | 2024-06-21 |
| 26 | V1.1.3 XXXX | 10d | 2024-06-24 | 2024-07-05 |
| 27 | V1.1.4 XXXX | 10d | 2024-07-08 | 2024-07-19 |
| 28 | V1.1.5 XXXX | 10d | 2024-07-22 | 2024-08-02 |
| 29 | V1.1.6 XXXX | 10d | 2024-08-05 | 2024-08-16 |
| 30 | V1.1.7 XXXX | 10d | 2024-08-19 | 2024-08-30 |
| 31 | V1.1.8 XXXX | 10d | 2024-09-02 | 2024-09-13 |
| 32 | V1.1.9 XXXX | 10d | 2024-09-16 | 2024-09-27 |
| 33 | V1.1.10 XXXX | 10d | 2024-09-30 | 2024-10-11 |
| 34 | V1.1.11 XXXX | 10d | 2024-10-14 | 2024-10-25 |

Removed: 3 V1.0 架构搭建与需求梳理; 4 V1.1 实时监视模块(区域监视+场站监视)与指标计算组件迁移; 5 V1.2 实时监视(设备监视); 6 V1.3 XXXX

Changed:

| ID | Task | Finish | Duration | Complete |
| --- | --- | --- | --- | --- |
| 2 | **一期** | 2024-06-07 → 2024-10-25 (+140d) | 25d → 125d | 0% → 1% |

## Version 3 (saved 2024-05-11)

Last finish stays 2025-06-30.

Changed:

| ID | Task | Finish | Duration |
| --- | --- | --- | --- |
| 18 | UI设计 | 2024-05-27 → 2024-05-31 (+4d) | 1d → 5d |
| 19 | 前端开发 | 2024-05-27 → 2024-06-05 (+9d) | 1d → 8d |
| 20 | 后端开发 | 2024-05-27 → 2024-06-05 (+9d) | 1d → 8d |

## Version 4 (saved 2024-05-13)

Last finish 2025-06-30 → 2025-04-01 (-90d).

Added:

| ID | Task | Duration | Start | Finish |
| --- | --- | --- | --- | --- |
| 8 | **V1.1.0 实时监视模块(区域监视) 系统管理 与组件迁移** | 10d | 2024-05-13 | 2024-05-24 |
| 17 | **V1.1.1 实时监视 场站监视+设备监视(页面功能)** | 10d | 2024-05-27 | 2024-06-07 |
| 25 | V1.1.2 运营指标 + 告警指标总览 | 10d | 2024-06-10 | 2024-06-21 |
| 26 | V1.1.3 自定义看板, 统计报表 | 10d | 2024-06-24 | 2024-07-05 |
| 27 | V1.1.4 故障诊断(一期) + 告警中心 | 10d | 2024-07-08 | 2024-07-19 |
| 28 | V1.1.5 3D可视化(首页 + 风机部件 + 光伏部件) | 10d | 2024-07-22 | 2024-08-02 |
| 29 | V1.1.6 告警中心(一期) + 设备监视模型完善 | 10d | 2024-08-05 | 2024-08-16 |
| 30 | V1.1.7 APP端开发 + 运维检修中心V1(一体化监测平台) | 10d | 2024-08-19 | 2024-08-30 |
| 31 | V1.1.8 APP端开发 + 运维检修中心V2(消防安防一体化监测) | 10d | 2024-09-02 | 2024-09-13 |
| 32 | V1.1.9 APP端开发 + 运维检修中心V3 | 10d | 2024-09-16 | 2024-09-27 |
| 33 | V1.1.10 APP端开发 + 运维检修中心V4 | 15d | 2024-09-30 | 2024-10-18 |
| 34 | V1.1.11 一期收尾 | 8d | 2024-10-21 | 2024-10-30 |
| 35 | 阶段评审 | 1d | 2024-10-31 | 2024-10-31 |
| 37 | V2.1.0 能效分析开发 + APP端开发 | 11d | 2024-11-01 | 2024-11-15 |
| 38 | V2.1.1 健康管理开发 + APP端开发 | 10d | 2024-11-18 | 2024-11-29 |
| 39 | V2.1.2 智能监盘V1开发 | 10d | 2024-12-02 | 2024-12-13 |
| 40 | V2.1.3 智能监盘V2开发 + APP端开发 | 10d | 2024-12-16 | 2024-12-27 |
| 41 | V2.1.4 生产管理平台二次开发 | 22d | 2024-12-30 | 2025-01-28 |
| 42 | V2.1.5 运维检修平台与生产管理平台打通 | 9d | 2025-02-04 | 2025-02-14 |
| 43 | V2.1.6 APP端开发 | 10d | 2025-02-17 | 2025-02-28 |
| 44 | V2.1.7 APP端开发 | 10d | 2025-03-03 | 2025-03-14 |
| 45 | V2.1.8 | 10d | 2025-03-17 | 2025-03-28 |
| 46 | 阶段评审 | 1d | 2025-03-31 | 2025-03-31 |
| 48 | V3.1.0 | 1d | 2025-04-01 | 2025-04-01 |

Removed: 8 V1.1.0 实时监视模块(区域监视+场站监视)与指标计算组件迁移; 17 V1.1.1 实时监视(设备监视); 25 V1.1.2 XXXX; 26 V1.1.3 XXXX; 27 V1.1.4 XXXX; 28 V1.1.5 XXXX; 29 V1.1.6 XXXX; 30 V1.1.7 XXXX; 31 V1.1.8 XXXX; 32 V1.1.9 XXXX; 33 V1.1.10 XXXX; 34 V1.1.11 XXXX

Changed:

| ID | Task | Finish | Duration |
| --- | --- | --- | --- |
| 2 | **一期** | 2024-10-25 → 2024-10-31 (+6d) | 125d → 129d |
| 47 | **三期** | 2025-06-30 → 2025-04-01 (-90d) | 65d → 1d |

## Version 5 (saved 2024-05-14)

Last finish 2025-04-01 → 2025-06-30 (+90d). Complete tasks 1 → 3.

Added:

| ID | Task | Duration | Start | Finish |
| --- | --- | --- | --- | --- |
| 25 | V1.1.2 运营中心开发 | 20d | 2024-06-10 | 2024-07-05 |
| 26 | V1.1.4 数据分析与健康管理(一期开发) + APP开发 | 20d | 2024-07-08 | 2024-08-02 |
| 27 | V1.1.6 3D可视化与告警中心(一期开发) + APP开发 | 20d | 2024-08-05 | 2024-08-30 |
| 28 | V1.1.8 运维检修中心 | 35d | 2024-09-02 | 2024-10-18 |
| 32 | V2.1.0 阶段评审修改与优化 | 11d | 2024-11-01 | 2024-11-15 |
| 33 | V2.1.2 智能监盘开发 + APP开发 | 20d | 2024-11-18 | 2024-12-13 |
| 34 | V2.1.4 数据分析与健康管理(二期开发) + APP开发 | 20d | 2024-12-16 | 2025-01-10 |
| 35 | V2.1.6 生产管理平台二次开发V1 + APP开发 | 25d | 2025-01-13 | 2025-02-14 |
| 36 | V2.1.8 生产管理平台二次开发V2 + APP开发 | 20d | 2025-02-17 | 2025-03-14 |
| 37 | V2.1.10 二期收尾 | 10d | 2025-03-17 | 2025-03-28 |
| 40 | V3.1.0 阶段性评审修改与优化 | 22d | 2025-04-01 | 2025-04-30 |
| 41 | V3.1.2 持续优化迭代(功能优化, 移动端优化, 算法模型优化, 监盘规则以及监测协议支持) | 42d | 2025-05-01 | 2025-06-27 |
| 42 | 阶段评审 | 1d | 2025-06-30 | 2025-06-30 |

Removed: 25 V1.1.2 运营指标 + 告警指标总览; 26 V1.1.3 自定义看板, 统计报表; 27 V1.1.4 故障诊断(一期) + 告警中心; 28 V1.1.5 3D可视化(首页 + 风机部件 + 光伏部件); 29 V1.1.6 告警中心(一期) + 设备监视模型完善; 30 V1.1.7 APP端开发 + 运维检修中心V1(一体化监测平台); 31 V1.1.8 APP端开发 + 运维检修中心V2(消防安防一体化监测); 32 V1.1.9 APP端开发 + 运维检修中心V3; 33 V1.1.10 APP端开发 + 运维检修中心V4; 37 V2.1.0 能效分析开发 + APP端开发; 38 V2.1.1 健康管理开发 + APP端开发; 39 V2.1.2 智能监盘V1开发; 40 V2.1.3 智能监盘V2开发 + APP端开发; 41 V2.1.4 生产管理平台二次开发; 42 V2.1.5 运维检修平台与生产管理平台打通; 43 V2.1.6 APP端开发; 44 V2.1.7 APP端开发; 45 V2.1.8; 48 V3.1.0

Changed:

| ID | Task | Finish | Duration | Complete |
| --- | --- | --- | --- | --- |
| 2 | **一期** |  |  | 1% → 2% |
| 3 | **V0.1 架构搭建与需求梳理** |  |  | 2% → 100% |
| 4 | **架构搭建** |  |  | 50% → 100% |
| 6 | 前端架构搭建 |  |  | 0% → 100% |
| 7 | 需求梳理 |  |  | 0% → 100% |
| 39 | **三期** | 2025-04-01 → 2025-06-30 (+90d) | 1d → 65d |  |

## Version 6 (saved 2024-05-15)

Last finish stays 2025-06-30.

Added:

| ID | Task | Duration | Start | Finish |
| --- | --- | --- | --- | --- |
| 8 | **V1.1.0 组件迁移+架构调整+页面开发(系统管理+实时监视)** | 10d | 2024-05-13 | 2024-05-24 |
| 17 | **V1.1.1 页面开发(运维检修+智能监盘+实时监视+运营监视+数据分析+健康管理)** | 10d | 2024-05-27 | 2024-06-07 |
| 25 | V1.1.2 实时监视与运营中心开发联调 | 20d | 2024-06-10 | 2024-07-05 |
| 26 | V1.1.4 数据分析与健康管理(软件开发) + APP开发 | 20d | 2024-07-08 | 2024-08-02 |
| 27 | V1.1.6 3D可视化与告警中心(数据打通) + APP开发 | 20d | 2024-08-05 | 2024-08-30 |
| 33 | V2.1.2 智能监盘开发(后端+联调) + 告警中心(事故追忆) + APP开发 | 20d | 2024-11-18 | 2024-12-13 |
| 34 | V2.1.4 数据分析与健康管理(模型开发) + APP开发 | 20d | 2024-12-16 | 2025-01-10 |
| 35 | V2.1.6 生产管理平台二次开发(工单系统改造) + APP开发 | 25d | 2025-01-13 | 2025-02-14 |
| 36 | V2.1.8 生产管理平台二次开发(打通上下游业务) + APP开发 | 20d | 2025-02-17 | 2025-03-14 |

Removed: 8 V1.1.0 实时监视模块(区域监视) 系统管理 与组件迁移; 17 V1.1.1 实时监视 场站监视+设备监视(页面功能); 25 V1.1.2 运营中心开发; 26 V1.1.4 数据分析与健康管理(一期开发) + APP开发; 27 V1.1.6 3D可视化与告警中心(一期开发) + APP开发; 33 V2.1.2 智能监盘开发 + APP开发; 34 V2.1.4 数据分析与健康管理(二期开发) + APP开发; 35 V2.1.6 生产管理平台二次开发V1 + APP开发; 36 V2.1.8 生产管理平台二次开发V2 + APP开发

## Version 7 (saved 2024-05-17)

Last finish stays 2025-06-30. Complete tasks 3 → 5.

Added:

| ID | Task | Duration | Start | Finish |
| --- | --- | --- | --- | --- |
| 8 | **V1.1.1 组件迁移+架构调整+页面开发(系统管理+实时监视)** | 10d | 2024-05-13 | 2024-05-24 |
| 17 | **V1.1.2 页面开发(运维检修+智能监盘+实时监视+运营监视+数据分析+健康管理)** | 10d | 2024-05-27 | 2024-06-07 |
| 22 | V1.1.3 需求设计 | 8d | 2024-05-27 | 2024-06-05 |
| 23 | V1.1.3 需求评审 | 1d | 2024-06-06 | 2024-06-06 |
| 24 | V1.1.3 UI设计 | 2d | 2024-06-06 | 2024-06-07 |
| 25 | V1.1.3 实时监视与运营中心开发联调 | 20d | 2024-06-10 | 2024-07-05 |
| 26 | V1.1.5 数据分析与健康管理(软件开发) + APP开发 | 20d | 2024-07-08 | 2024-08-02 |
| 27 | V1.1.7 3D可视化与告警中心(数据打通) + APP开发 | 20d | 2024-08-05 | 2024-08-30 |
| 28 | V1.1.9 运维检修中心 | 35d | 2024-09-02 | 2024-10-18 |
| 29 | V1.1.12 一期收尾 | 8d | 2024-10-21 | 2024-10-30 |

Removed: 8 V1.1.0 组件迁移+架构调整+页面开发(系统管理+实时监视); 14 V1.1.1 需求设计; 15 V1.1.1 需求评审; 16 V1.1.1 UI设计; 17 V1.1.1 页面开发(运维检修+智能监盘+实时监视+运营监视+数据分析+健康管理); 25 V1.1.2 实时监视与运营中心开发联调; 26 V1.1.4 数据分析与健康管理(软件开发) + APP开发; 27 V1.1.6 3D可视化与告警中心(数据打通) + APP开发; 28 V1.1.8 运维检修中心; 29 V1.1.11 一期收尾

Changed:

| ID | Task | Start | Finish | Duration | Complete |
| --- | --- | --- | --- | --- | --- |
| 2 | **一期** |  |  |  | 2% → 12% |
| 9 | 需求评审 |  |  |  | 0% → 100% |
| 10 | UI设计 |  | 2024-05-22 → 2024-05-17 (-5d) | 8d → 5d | 0% → 100% |
| 11 | 前端开发 |  | 2024-05-22 → 2024-05-21 (-1d) | 8d → 7d | 0% → 65% |
| 12 | 后端开发 |  |  |  | 0% → 50% |
| 13 | 测试 | 2024-05-23 → 2024-05-17 (-6d) | 2024-05-24 → 2024-05-20 (-4d) |  |  |
| 14 | V1.1.2 需求设计 | 2024-05-27 → 2024-05-16 (-11d) | 2024-06-05 → 2024-05-17 (-19d) | 8d → 2d | 0% → 70% |
| 15 | V1.1.2 需求评审 | 2024-06-06 → 2024-05-21 (-16d) | 2024-06-06 → 2024-05-21 (-16d) |  |  |
| 16 | V1.1.2 UI设计 | 2024-06-06 → 2024-05-21 (-16d) | 2024-06-07 → 2024-05-24 (-14d) | 2d → 4d |  |

## Version 8 (saved 2024-05-24)

Last finish stays 2025-06-30. Complete tasks 5 → 10.

Changed:

| ID | Task | Start | Finish | Duration | Complete |
| --- | --- | --- | --- | --- | --- |
| 2 | **一期** |  |  |  | 12% → 19% |
| 8 | **V1.1.1 组件迁移+架构调整+页面开发(系统管理+实时监视)** |  |  |  | 53% → 93% |
| 11 | 前端开发 |  |  |  | 65% → 100% |
| 12 | 后端开发 |  |  |  | 50% → 100% |
| 14 | V1.1.2 需求设计 |  |  |  | 70% → 100% |
| 15 | V1.1.2 需求评审 |  |  |  | 0% → 100% |
| 16 | V1.1.2 UI设计 |  |  |  | 0% → 100% |
| 17 | **V1.1.2 页面开发(运维检修+智能监盘+实时监视+运营监视+数据分析+健康管理)** | 2024-05-27 → 2024-05-23 (-4d) |  | 10d → 12d |  |
| 22 | V1.1.3 需求设计 | 2024-05-27 → 2024-05-23 (-4d) | 2024-06-05 → 2024-05-28 (-8d) | 8d → 4d |  |

## Version 9 (saved 2024-05-27)

Last finish stays 2025-06-30.

Changed:

| ID | Task | Start | Finish |
| --- | --- | --- | --- |
| 23 | V1.1.3 需求评审 | 2024-06-06 → 2024-05-28 (-9d) | 2024-06-06 → 2024-05-28 (-9d) |

## Version 10 (saved 2024-05-31)

Last finish stays 2025-06-30. Complete tasks 10 → 13.

Added:

| ID | Task | Duration | Start | Finish |
| --- | --- | --- | --- | --- |
| 25 | **V1.1.3 数据分析与健康管理** | 16d | 2024-05-31 | 2024-06-21 |
| 26 | UI设计 | 3d | 2024-05-31 | 2024-06-04 |
| 27 | 前端开发 | 3d | 2024-05-31 | 2024-06-04 |
| 28 | 后端开发 | 10d | 2024-06-10 | 2024-06-21 |
| 29 | 测试 | 1d | 2024-06-10 | 2024-06-10 |
| 30 | V1.1.9 需求设计 | 3d | 2024-05-31 | 2024-06-04 |
| 31 | V1.1.9 需求评审 | 1d | 2024-06-05 | 2024-06-05 |
| 32 | V1.1.9 UI设计 | 3d | 2024-06-05 | 2024-06-07 |

Removed: 25 V1.1.3 实时监视与运营中心开发联调

Changed:

| ID | Task | Complete |
| --- | --- | --- |
| 2 | **一期** | 19% → 28% |
| 17 | **V1.1.2 页面开发(运维检修+智能监盘+实时监视+运营监视+数据分析+健康管理)** | 0% → 57% |
| 19 | 前端开发 | 0% → 100% |
| 20 | 后端开发 | 0% → 45% |
| 22 | V1.1.3 需求设计 | 0% → 100% |
| 23 | V1.1.3 需求评审 | 0% → 100% |
| 24 | V1.1.3 UI设计 | 0% → 30% |
